# LocalInformationSystem

Schedule from MS Project, 2003-05-02 to 2003-11-28, costs in $, A marks actual dates.
VASC

## Calendars

- Standard: Mon-Fri 08:00-12:00, 13:00-17:00; Sat 08:00-12:00; Sun off. Exceptions (off unless hours are given): 2003-09-02.

## Resources

| Resource | Rate |
| --- | --- |
| huynt | 1 |
| chungnh | 0.7 |
| Lập trình viên 2 | 0.7 |
| Lập trình viên 3 | 0.5 |
| Director |  |
| v |  |

## Schedule

| ID | WBS | Task | Duration | Start | Finish | Predecessors | Complete | Remaining | Total slack | Free slack | Resources | Work | Actual work | Cost | Actual cost |
| --- | --- | --- | --- | --- | --- | --- | --- | --- | --- | --- | --- | --- | --- | --- | --- |
| 1 | 1 | **Kế hoạch sơ bộ phát triển Simple Portal** | 165d? | 2003-05-02 A | 2003-11-28 |  | 4% | 157.86d? | 0d |  |  | 7834.8h | 68.8h | 5,416 | 68.8 |
| 2 | 1.1 | **Khởi động** | 15d? | 2003-05-02 A | 2003-05-21 |  | 41% | 8.91d? | 0d |  |  | 266h | 68.8h | 214 | 68.8 |
| 3 | 1.1.1 | **Phát biểu phạm vi hệ thống** | 9d | 2003-05-02 A | 2003-05-13 |  | 84% | 1.4d | 6d |  |  | 46h | 33.6h | 42 | 33.6 |
| 4 | 1.1.1.1 | Phát triển Vision | 9d | 2003-05-02 A | 2003-05-13 |  | 89% | 1d | 6d |  | huynt | 40h | 32h | 40 | 32 |
| 5 | 1.1.1.2 | Danh sách rủi ro | 0.45d | 2003-05-02 A | 2003-05-02 |  | 89% | 0.05d | 14.55d |  | huynt | 2h | 1.6h | 2 | 1.6 |
| 6 | 1.1.1.3 | Review | 0.5d | 2003-05-02 | 2003-05-02 |  |  |  | 14.5d |  | Director | 4h |  |  |  |
| 7 | 1.1.2 | **Lên kế hoạch và Sơ phác Busieness Use Case** | 0.5d | 2003-05-02 A | 2003-05-02 |  | 72% | 0.14d | 14.5d |  |  | 6h | 5.6h | 6 | 5.6 |
| 8 | 1.1.2.1 | Lập Kế hoạch phát triển dự án | 0.5d | 2003-05-02 A | 2003-05-02 A |  | 100% |  |  |  | huynt | 2h | 2h | 2 | 2 |
| 9 | 1.1.2.2 | Sơ tính chi phí và ước lượng thời gian | 0.5d | 2003-05-02 A | 2003-05-02 A |  | 100% |  |  |  | huynt | 2h | 2h | 2 | 2 |
| 10 | 1.1.2.3 | Định nghĩa các phương pháp giảm thiểu rủi ro | 0.45d | 2003-05-02 A | 2003-05-02 |  | 89% | 0.05d | 14.55d |  | huynt | 2h | 1.6h | 2 | 1.6 |
| 11 | 1.1.2.4 | Review | 0.5d | 2003-05-02 | 2003-05-02 |  |  |  | 14.5d |  |  |  |  |  |  |
| 12 | 1.1.3 | **Tổng hợp và xác định mô hình kiến trúc của sản phẩm** | 15d? | 2003-05-02 A | 2003-05-21 |  | 15% | 12.78d? | 0d |  |  | 170h | 13.6h | 126 | 13.6 |
| 13 | 1.1.3.1 | Lập Business Use case | 6.5d | 2003-05-02 A | 2003-05-09 |  | 46% | 3.5d | 8.5d |  | huynt | 40h | 12h | 40 | 12 |
| 14 | 1.1.3.2 | Ước lượng và xác định thời gian cho việc thử nghiệm công nghệ | 0.45d | 2003-05-02 A | 2003-05-02 |  | 89% | 0.05d | 14.55d |  | huynt | 2h | 1.6h | 2 | 1.6 |
| 15 | 1.1.3.3 | Lập các Propotype cho công nghệ mới sẽ sử dụng | 15d | 2003-05-02 | 2003-05-21 |  |  |  | 0d |  | chungnh | 120h |  | 84 |  |
| 16 | 1.1.3.4 | Review | 1d? | 2003-05-02 | 2003-05-02 |  |  |  | 14d |  | Director | 8h |  |  |  |
| 17 | 1.1.4 | Chuẩn bị môi trường cho đội dự án | 2d | 2003-05-02 A | 2003-05-05 A |  | 100% |  |  |  | huynt | 8h | 8h | 8 | 8 |
| 18 | 1.1.5 | Hoàn thiện và thống nhất kế hoạch phát triển | 1d? | 2003-05-02 A | 2003-05-03 A | 7 | 100% |  |  |  | huynt | 4h | 4h | 4 | 4 |
| 19 | 1.1.6 | Sơ phác Use Case | 3d | 2003-05-02 A | 2003-05-06 |  | 33% | 2d | 12d |  | huynt | 20h | 4h | 20 | 4 |
| 20 | 1.1.7 | Lên kế hoạch chi tiết cho giai đoạn Chi tiết hoá | 1d | 2003-05-02 | 2003-05-02 |  |  |  | 13.5d | 0d | huynt | 8h |  | 8 |  |
| 21 | 1.1.8 | Phê duyệt kế hoạch giai đoạn chi tiết hoá | 0.5d | 2003-05-03 | 2003-05-03 | 20 |  |  | 13.5d |  | Director | 4h |  |  |  |
| 22 | 1.2 | **Chi tiết hoá** | 30d? | 2003-05-21 | 2003-06-27 | 2 |  |  | 0d |  |  | 496h |  | 435.6 |  |
| 23 | 1.2.1 | Định nghĩa, phê chuẩn và chỉ ra giới hạn của kiến trúc Hệ thống | 0.5d? | 2003-05-21 | 2003-05-21 |  |  |  | 29.5d |  | huynt | 4h |  | 4 |  |
| 24 | 1.2.2 | Tinh chỉnh Vision | 1d | 2003-05-21 | 2003-05-22 |  |  |  | 29d |  | huynt | 8h |  | 8 |  |
| 25 | 1.2.3 | Mô tả môi trường Test | 0.5d | 2003-05-21 | 2003-05-21 |  |  |  | 29.5d |  | chungnh | 4h |  | 2.8 |  |

| ID | WBS | Task | Duration | Start | Finish | Predecessors | Total slack | Free slack | Resources | Work | Cost |
| --- | --- | --- | --- | --- | --- | --- | --- | --- | --- | --- | --- |
| 26 | 1.2.4 | **Cập nhật Các tài liệu khác** | 3d | 2003-05-21 | 2003-05-24 |  | 27d |  |  | 72h | 64.8 |
| 27 | 1.2.4.1 | Risk List | 1.5d | 2003-05-21 | 2003-05-22 |  | 28.5d |  | huynt | 12h | 12 |
| 28 | 1.2.4.2 | Business use Case | 1.5d | 2003-05-21 | 2003-05-22 |  | 28.5d |  | huynt | 12h | 12 |
| 29 | 1.2.4.3 | Requirement | 1.5d | 2003-05-21 | 2003-05-22 |  | 28.5d |  | huynt | 12h | 12 |
| 30 | 1.2.4.4 | Use case | 1.5d | 2003-05-21 | 2003-05-22 |  | 28.5d |  | huynt | 12h | 12 |
| 31 | 1.2.4.5 | Conding Converntion | 3d | 2003-05-21 | 2003-05-24 |  | 27d |  | chungnh | 24h | 16.8 |
| 32 | 1.2.5 | **Phân tích và thiết kế chi tiết kiến trúc hệ thống** | 30d | 2003-05-21 | 2003-06-27 |  | 0d |  |  | 240h | 240 |
| 33 | 1.2.5.1 | Tài liệu kiến trúc hệ thống | 1d | 2003-05-21 | 2003-05-22 |  | 0d |  | huynt | 8h | 8 |
| 34 | 1.2.5.2 | Design Model | 15d | 2003-05-22 | 2003-06-10 | 33 | 0d |  | huynt | 120h | 120 |
| 35 | 1.2.5.3 | Data Model | 10d | 2003-06-11 | 2003-06-23 | 34 | 0d |  | huynt | 80h | 80 |
| 36 | 1.2.5.4 | Component Model | 4d | 2003-06-24 | 2003-06-27 | 35 | 0d |  | huynt | 32h | 32 |
| 37 | 1.2.6 | Xây dựng các Propotype " vận hành được" của các tính năng then chốt | 20d | 2003-05-21 | 2003-06-16 |  | 10d |  | chungnh | 160h | 112 |
| 38 | 1.2.7 | Lên kế hoạch và base lie cho giai đoạn Xây dựng | 0.5d | 2003-05-21 | 2003-05-21 |  | 29d | 0d | huynt | 4h | 4 |
| 39 | 1.2.8 | Phê duyệt kế hoạch cho giai đoạn xây dựng | 0.5d | 2003-05-22 | 2003-05-22 | 38 | 29d |  | Director | 4h |  |
| 40 | 1.3 | **Xây dựng** | 100d | 2003-06-28 | 2003-11-04 | 22 | 0d |  |  | 4524.8h | 3,019.2 |
| 41 | 1.3.1 | Lập Test suite | 10d | 2003-06-28 | 2003-07-10 |  | 90d |  | chungnh | 80h | 56 |
| 42 | 1.3.2 | Quản lý tài nguyên và kiểm soát tiến trình | 5d | 2003-06-28 | 2003-07-04 |  | 95d |  | huynt | 40h | 40 |
| 43 | 1.3.3 | Codding và Unit Testing | 80d | 2003-06-28 | 2003-10-09 |  | 0d |  | Lập trình viên 3; chungnh; Lập trình viên 2 | 1920h | 1,216 |
| 44 | 1.3.4 | Deloyment Model | 10d | 2003-06-28 | 2003-07-10 |  | 90d |  | chungnh; Lập trình viên 2; Lập trình viên 3 | 240h | 152 |
| 45 | 1.3.5 | **Hoàn thiện và cập nhật các tài liệu khác** | 10d | 2003-06-28 | 2003-07-10 |  | 90d |  |  | 652.8h | 460.8 |
| 46 | 1.3.5.1 | Design Model | 10d | 2003-06-28 | 2003-07-10 |  | 90d |  | huynt; chungnh; Lập trình viên 2 | 163.2h | 115.2 |
| 47 | 1.3.5.2 | Data Model | 10d | 2003-06-28 | 2003-07-10 |  | 90d |  | huynt; chungnh; Lập trình viên 2 | 163.2h | 115.2 |
| 48 | 1.3.5.3 | Component Model | 10d | 2003-06-28 | 2003-07-10 |  | 90d |  | huynt; chungnh; Lập trình viên 2 | 163.2h | 115.2 |
| 49 | 1.3.5.4 | Use case Model | 10d | 2003-06-28 | 2003-07-10 |  | 90d |  | huynt; chungnh; Lập trình viên 2 | 163.2h | 115.2 |
| 50 | 1.3.6 | Lập kế hoạch cho giai đoạn chuyển giao | 1d | 2003-06-28 | 2003-06-30 |  | 99d |  | huynt; chungnh; Lập trình viên 2 | 24h | 19.2 |
| 51 | 1.3.7 | Technial Document | 10d | 2003-06-28 | 2003-07-10 |  | 90d |  | chungnh; Lập trình viên 2; Lập trình viên 3; huynt | 280h | 192 |
| 52 | 1.3.8 | Tranning Document | 10d | 2003-06-28 | 2003-07-10 |  | 90d |  | chungnh; Lập trình viên 2; Lập trình viên 3; huynt | 280h | 192 |
| 53 | 1.3.9 | Help Document | 10d | 2003-06-28 | 2003-07-10 |  | 90d |  | chungnh; Lập trình viên 2; Lập trình viên 3; huynt | 280h | 192 |
| 54 | 1.3.10 | User Manual | 5d | 2003-06-28 | 2003-07-04 |  | 95d |  | chungnh; Lập trình viên 2; Lập trình viên 3; huynt | 140h | 96 |
| 55 | 1.3.11 | System Requirement | 1d | 2003-06-28 | 2003-06-30 |  | 99d |  | chungnh; Lập trình viên 2; Lập trình viên 3; huynt | 28h | 19.2 |
| 56 | 1.3.12 | Intergrattion Testing | 20d | 2003-10-09 | 2003-11-04 | 43 | 0d |  | chungnh; Lập trình viên 2; Lập trình viên 3; huynt | 560h | 384 |

| ID | WBS | Task | Duration | Start | Finish | Predecessors | Total slack | Resources | Work | Cost |
| --- | --- | --- | --- | --- | --- | --- | --- | --- | --- | --- |
| 57 | 1.4 | **Chuyển giao** | 20d? | 2003-11-04 | 2003-11-28 | 40 | 0d |  | 1428h | 979.2 |
| 58 | 1.4.1 | Hoàn thành các tài liệu hỗ trợ | 10d | 2003-11-04 | 2003-11-17 |  | 10d | chungnh; Lập trình viên 2; Lập trình viên 3; huynt [50%] | 280h | 192 |
| 59 | 1.4.2 | Kiểm tra khả năng vận hành trên các Môi trường khác nhau | 10d | 2003-11-04 | 2003-11-17 |  | 10d | chungnh; Lập trình viên 2; Lập trình viên 3; huynt | 280h | 192 |
| 60 | 1.4.3 | Tinh chỉnh sản phẩm | 10d | 2003-11-04 | 2003-11-17 |  | 10d | chungnh; Lập trình viên 2; Lập trình viên 3; huynt | 280h | 192 |
| 61 | 1.4.4 | Đóng gói sản phẩm | 20d | 2003-11-04 | 2003-11-28 |  | 0d | chungnh; Lập trình viên 2; Lập trình viên 3; huynt | 560h | 384 |
| 62 | 1.4.5 | Release Notes | 1d? | 2003-11-04 | 2003-11-05 |  | 19d | chungnh; Lập trình viên 2; Lập trình viên 3; huynt | 28h | 19.2 |
| 63 | 1.5 | Tranning | 40d | 2003-05-02 | 2003-06-21 |  | 125d | chungnh; Lập trình viên 2; Lập trình viên 3; huynt | 1120h | 768 |
